# PLANNING GÉNÉRAL DES OUVRAGES BÉTON — 19/10/2026 au 18/01/2027 (mur 3, dalots OHD, buses OHB)

Schedule from MS Project XML, 2026-10-14 to 2027-03-17, 10 hours a day.
Marché 626313 — Lot 3
SBTX

## Calendars

- Chantier 10 h x 6 j + 1er/3e dimanches (Lot 3): Mon-Sat 07:00-12:00, 13:00-18:00; Sun off. Exceptions (off unless hours are given): 2026-10-18 07:00-12:00, 13:00-18:00 (Dimanche travaillé (1er/3e)), 2026-11-01 07:00-12:00, 13:00-18:00 (Dimanche travaillé (1er/3e)), 2026-11-15 07:00-12:00, 13:00-18:00 (Dimanche travaillé (1er/3e)), 2026-12-06 07:00-12:00, 13:00-18:00 (Dimanche travaillé (1er/3e)), 2026-12-20 07:00-12:00, 13:00-18:00 (Dimanche travaillé (1er/3e)), 2027-01-03 07:00-12:00, 13:00-18:00 (Dimanche travaillé (1er/3e)), 2027-01-17 07:00-12:00, 13:00-18:00 (Dimanche travaillé (1er/3e)), 2027-02-07 07:00-12:00, 13:00-18:00 (Dimanche travaillé (1er/3e)), 2027-02-21 07:00-12:00, 13:00-18:00 (Dimanche travaillé (1er/3e)), 2027-03-07 07:00-12:00, 13:00-18:00 (Dimanche travaillé (1er/3e)), 2027-03-08 to 2027-03-14 (Congé Aïd (estimé, à confirmer)).

## Resources

| Resource | Group | Notes |
| --- | --- | --- |
| Terrassement / préparation (mur) | Mur |  |
| Équipe de mur A · ferraillage (12 ferrailleurs) | Mur |  |
| Pompe à béton + équipe de bétonnage (mur) | Mur | Équipe béton commune du mur (V02), affectée aux 94 coulages du mur. |
| Équipe de mur A · coffrage (6 coffreurs) | Commun |  |
| Équipe de mur B · ferraillage (12 ferrailleurs) | Mur |  |
| Équipe de mur B · coffrage (6 coffreurs) | Commun |  |
| D1 · Équipe terrassement (conducteur + 2 aides) | D1 |  |
| D1 · Coffreurs | D1 |  |
| D1 · Pelle hydraulique 20-25 t | D1 |  |
| Équipe béton n°2 (dalots) | Commun | Équipe béton des dalots (1 chef + 5, cf. 364 V01) : besoin d’une équipe dédiée à confirmer (voir synthèse). |
| D1 · Ferrailleurs | D1 |  |
| D1 · Encadrement (chef d’équipe + chef de chantier) | D1 |  |
| Pompe à béton (à la journée) | Commun | Une pompe à la journée ; surcharge = jours de double besoin D1 + D2. |
| D1 · Chariot télescopique | D1 |  |
| D1 · Coffrage intérieur 2 alvéoles (jeux) | D1 |  |
| D1 · Étaiement têtes tombantes (jeux) | D1 |  |
| D1 · Équipe finitions / étanchéité (4) | D1 |  |
| D1 · Coffrage intérieur 3 alvéoles (jeux) | D1 |  |
| D2 · Équipe terrassement (conducteur + 2 aides) | D2 |  |
| D2 · Coffreurs | D2 |  |
| D2 · Pelle hydraulique 20-25 t | D2 |  |
| D2 · Ferrailleurs | D2 |  |
| D2 · Encadrement (chef d’équipe + chef de chantier) | D2 |  |
| D2 · Chariot télescopique | D2 |  |
| D2 · Coffrage intérieur 3 alvéoles (jeux) | D2 |  |
| D2 · Étaiement têtes tombantes (jeux) | D2 |  |
| D2 · Équipe finitions / étanchéité (4) | D2 |  |
| D3 · Équipe terrassement (conducteur + 2 aides) | D3 |  |
| D3 · Coffreurs | D3 |  |
| D3 · Pelle hydraulique 20-25 t | D3 |  |
| D3 · Ferrailleurs | D3 |  |
| D3 · Encadrement (chef d’équipe + chef de chantier) | D3 |  |
| D3 · Chariot télescopique | D3 |  |
| D3 · Coffrage intérieur 3 alvéoles (jeux) | D3 |  |
| D3 · Étaiement têtes tombantes (jeux) | D3 |  |
| D3 · Équipe finitions / étanchéité (4) | D3 |  |
| D4 · Équipe terrassement (conducteur + 2 aides) | D4 |  |
| D4 · Coffreurs | D4 |  |
| D4 · Pelle hydraulique 20-25 t | D4 |  |
| D4 · Ferrailleurs | D4 |  |
| D4 · Encadrement (chef d’équipe + chef de chantier) | D4 |  |
| D4 · Chariot télescopique | D4 |  |
| D4 · Coffrage intérieur 3 alvéoles (jeux) | D4 |  |
| D4 · Étaiement têtes tombantes (jeux) | D4 |  |
| D4 · Équipe finitions / étanchéité (4) | D4 |  |
| D4 · Coffrage intérieur 2 alvéoles (jeux) | D4 |  |
| OHB · Équipe de pose (grutier, chef de manœuvre, 3 poseurs) | OHB |  |
| OHB · Ferrailleurs (têtes) | OHB |  |
| OHB · Coffreurs (têtes) | OHB |  |
| OHB · Maçons (têtes) | OHB |  |
| OHB · Chef d'équipe | OHB |  |
| OHB · Pelle 20-25 t | OHB |  |
| OHB · Grue 50-70 t (ou pelle ≥ 35 t certifiée levage) | OHB |  |

## Schedule

| ID | WBS | Task | Type | Duration | Start | Finish | Constraint | Resources | Work | Ouvrage | Phase |
| --- | --- | --- | --- | --- | --- | --- | --- | --- | --- | --- | --- |
| 1 | 1 | DÉMARRAGE DES TRAVAUX — lundi 19/10/2026 | milestone | 0d | 2026-10-19 | 2026-10-19 | start no earlier than 2026-10-19 |  |  | MUR 3 | Jalon |
| 2 | 2 | Fin de la fenêtre 3 mois — 18/01/2027 | milestone | 0d | 2027-01-18 | 2027-01-18 | start no earlier than 2027-01-18 |  |  | MUR 3 | Jalon |
| 3 | 3 | **MUR 3 — mur de soutènement n°3** |  | 92.23d | 2026-10-19 | 2027-01-27 |  |  | 922.33h | MUR 3 |  |
| 4 | 3.1 | Travaux préparatoires |  | 4d | 2026-10-19 | 2026-10-22 | start no earlier than 2026-10-19 | Terrassement / préparation (mur) | 40h | MUR 3 |  |
| 5 | 3.2 | Semelles |  | 85.6d | 2026-10-23 | 2027-01-25 | start no earlier than 2026-10-23 |  | 856h | MUR 3 | Semelle |
| 6 | 3.3 | Voiles |  | 85.7d | 2026-10-26 | 2027-01-27 | start no earlier than 2026-10-26 |  | 857h | MUR 3 | Voile |
| 7 | 3.4 | FIN MUR 3 — remblai libéré (lot terrassements) | milestone | 0d | 2027-01-27 | 2027-01-27 | start no earlier than 2027-01-27 |  |  | MUR 3 | Jalon |
| 8 | 4 | **DALOTS** |  | 136.6d | 2026-10-14 | 2027-03-17 |  |  | 1366h | MUR 3 |  |
| 9 | 4.1 | **OHD 360 — 2 × 2,00×2,00 — PK 36+049,69** |  | 78.85d | 2026-10-21 | 2027-01-14 |  |  | 788.5h | OHD 360 |  |
| 10 | 4.1.1 | OHD 360 — radiers |  | 41.13d | 2026-10-21 | 2026-12-05 | start no earlier than 2026-10-21 |  | 411.3h | OHD 360 | Radier |
| 11 | 4.1.2 | OHD 360 — cadres |  | 46.86d | 2026-10-24 | 2026-12-15 | start no earlier than 2026-10-24 |  | 468.6h | OHD 360 |  |
| 12 | 4.1.3 | OHD 360 — tête aval |  | 58.56d | 2026-10-24 | 2026-12-26 | start no earlier than 2026-10-24 |  | 585.6h | OHD 360 | Têtes |
| 13 | 4.1.4 | OHD 360 — tête amont |  | 36.89d | 2026-11-21 | 2027-01-01 | start no earlier than 2026-11-21 |  | 368.9h | OHD 360 | Têtes |
| 14 | 4.1.5 | Fin des travaux OHD 360 | milestone | 0d | 2027-01-01 | 2027-01-01 | start no earlier than 2027-01-01 |  |  | OHD 360 | Jalon |
| 15 | 4.1.6 | Épreuve OHD 360 |  | 1d | 2027-01-13 | 2027-01-14 | start no earlier than 2027-01-13 |  | 10h | OHD 360 | Épreuve |
| 16 | 4.2 | **OHD 364 — 3 × 2,00×2,00 — PK 36+408,30** |  | 81.82d | 2026-10-21 | 2027-01-17 |  |  | 818.2h | OHD 364 |  |
| 17 | 4.2.1 | OHD 364 — radiers |  | 45.44d | 2026-10-21 | 2026-12-09 | start no earlier than 2026-10-21 |  | 454.4h | OHD 364 | Radier |
| 18 | 4.2.2 | OHD 364 — cadres |  | 49.75d | 2026-10-24 | 2026-12-18 | start no earlier than 2026-10-24 |  | 497.5h | OHD 364 |  |
| 19 | 4.2.3 | OHD 364 — tête aval |  | 54.66d | 2026-10-24 | 2026-12-23 | start no earlier than 2026-10-24 |  | 546.6h | OHD 364 | Têtes |
| 20 | 4.2.4 | OHD 364 — tête amont |  | 34.37d | 2026-11-28 | 2027-01-04 | start no earlier than 2026-11-28 |  | 343.7h | OHD 364 | Têtes |
| 21 | 4.2.5 | Fin des travaux OHD 364 | milestone | 0d | 2027-01-04 | 2027-01-04 | start no earlier than 2027-01-04 |  |  | OHD 364 | Jalon |
| 22 | 4.2.6 | Épreuve OHD 364 |  | 1d | 2027-01-16 | 2027-01-17 | start no earlier than 2027-01-16 |  | 10h | OHD 364 | Épreuve |
| 23 | 4.3 | **OHD 367 — 3 × 2,00×2,00 — PK 36+691,84** |  | 72.58d | 2026-10-21 | 2027-01-07 |  |  | 725.8h | OHD 367 |  |
| 24 | 4.3.1 | OHD 367 — radiers |  | 42.94d | 2026-10-21 | 2026-12-06 | start no earlier than 2026-10-21 |  | 429.4h | OHD 367 | Radier |
| 25 | 4.3.2 | OHD 367 — cadres |  | 46.93d | 2026-10-26 | 2026-12-16 | start no earlier than 2026-10-26 |  | 469.3h | OHD 367 |  |
| 26 | 4.3.3 | OHD 367 — tête aval |  | 56.58d | 2026-10-26 | 2026-12-25 | start no earlier than 2026-10-26 |  | 565.8h | OHD 367 | Têtes |
| 27 | 4.3.4 | OHD 367 — tête amont |  | 55.95d | 2026-10-26 | 2026-12-24 | start no earlier than 2026-10-26 |  | 559.5h | OHD 367 | Têtes |
| 28 | 4.3.5 | Fin des travaux OHD 367 | milestone | 0d | 2027-01-01 | 2027-01-01 | start no earlier than 2027-01-01 |  |  | OHD 367 | Jalon |
| 29 | 4.3.6 | Épreuve OHD 367 |  | 1d | 2027-01-06 | 2027-01-07 | start no earlier than 2027-01-06 |  | 10h | OHD 367 | Épreuve |

| ID | WBS | Task | Type | Duration | Start | Finish | Constraint | Work | Ouvrage | Phase |
| --- | --- | --- | --- | --- | --- | --- | --- | --- | --- | --- |
| 30 | 4.4 | **OHD 374 — 3 × 2,50×2,00 — PK 37+381,16** |  | 56.9d | 2026-12-25 | 2027-02-24 |  | 569h | OHD 374 |  |
| 31 | 4.4.1 | OHD 374 — radiers |  | 25d | 2026-12-25 | 2027-01-20 | start no earlier than 2026-12-25 | 250h | OHD 374 | Radier |
| 32 | 4.4.2 | OHD 374 — cadres |  | 31d | 2026-12-31 | 2027-02-02 | start no earlier than 2026-12-31 | 310h | OHD 374 |  |
| 33 | 4.4.3 | OHD 374 — tête aval |  | 31.3d | 2026-12-30 | 2027-02-02 | start no earlier than 2026-12-30 | 313h | OHD 374 | Têtes |
| 34 | 4.4.4 | OHD 374 — tête amont |  | 34.9d | 2027-01-05 | 2027-02-11 | start no earlier than 2027-01-05 | 349h | OHD 374 | Têtes |
| 35 | 4.4.5 | Fin des travaux OHD 374 | milestone | 0d | 2027-02-19 | 2027-02-19 | start no earlier than 2027-02-18 |  | OHD 374 | Jalon |
| 36 | 4.4.6 | Épreuve OHD 374 |  | 1d | 2027-02-23 | 2027-02-24 | start no earlier than 2027-02-23 | 10h | OHD 374 | Épreuve |
| 37 | 4.5 | **OHD 387 — 3 × 2,50×2,00 — PK 38+674** |  | 53.8d | 2027-01-04 | 2027-03-03 |  | 538h | OHD 387 |  |
| 38 | 4.5.1 | OHD 387 — radiers |  | 6.5d | 2027-01-04 | 2027-01-11 | start no earlier than 2027-01-04 | 65h | OHD 387 | Radier |
| 39 | 4.5.2 | OHD 387 — cadres |  | 14.5d | 2027-01-09 | 2027-01-25 | start no earlier than 2027-01-09 | 145h | OHD 387 |  |
| 40 | 4.5.3 | OHD 387 — tête aval |  | 32.5d | 2027-01-08 | 2027-02-12 | start no earlier than 2027-01-08 | 325h | OHD 387 | Têtes |
| 41 | 4.5.4 | OHD 387 — tête amont |  | 35.3d | 2027-01-11 | 2027-02-18 | start no earlier than 2027-01-11 | 353h | OHD 387 | Têtes |
| 42 | 4.5.5 | Fin des travaux OHD 387 | milestone | 0d | 2027-02-18 | 2027-02-18 | start no earlier than 2027-02-18 |  | OHD 387 | Jalon |
| 43 | 4.5.6 | Épreuve OHD 387 |  | 1d | 2027-03-02 | 2027-03-03 | start no earlier than 2027-03-02 | 10h | OHD 387 | Épreuve |
| 44 | 4.6 | **OHD 393 — 4 × 2,50×2,00 — PK 39+309** |  | 56.6d | 2027-01-08 | 2027-03-17 |  | 566h | OHD 393 |  |
| 45 | 4.6.1 | OHD 393 — radiers |  | 15.5d | 2027-01-08 | 2027-01-25 | start no earlier than 2027-01-08 | 155h | OHD 393 | Radier |
| 46 | 4.6.2 | OHD 393 — cadres |  | 12.5d | 2027-01-20 | 2027-02-03 | start no earlier than 2027-01-20 | 125h | OHD 393 |  |
| 47 | 4.6.3 | OHD 393 — tête aval |  | 35.3d | 2027-01-19 | 2027-02-26 | start no earlier than 2027-01-19 | 353h | OHD 393 | Têtes |
| 48 | 4.6.4 | OHD 393 — tête amont |  | 35.1d | 2027-01-25 | 2027-03-04 | start no earlier than 2027-01-25 | 351h | OHD 393 | Têtes |
| 49 | 4.6.5 | Fin des travaux OHD 393 | milestone | 0d | 2027-03-04 | 2027-03-04 | start no earlier than 2027-03-04 |  | OHD 393 | Jalon |
| 50 | 4.6.6 | Épreuve OHD 393 |  | 1d | 2027-03-16 | 2027-03-17 | start no earlier than 2027-03-16 | 10h | OHD 393 | Épreuve |
| 51 | 4.7 | **OHD 424 — 5 × 2,00×1,50 — PK 42+416,93** |  | 106.8d | 2026-10-14 | 2027-02-06 |  | 1068h | OHD 424 |  |
| 52 | 4.7.1 | Longueur et ouverture OHD 424 tranchées par la MOE | milestone | 0d | 2026-10-14 | 2026-10-14 | must start on 2026-10-14 |  | OHD 424 | Jalon |
| 53 | 4.7.2 | OHD 424 — radiers |  | 6d | 2026-12-23 | 2026-12-29 | start no earlier than 2026-12-23 | 60h | OHD 424 | Radier |
| 54 | 4.7.3 | OHD 424 — cadres |  | 11.5d | 2026-12-29 | 2027-01-09 | start no earlier than 2026-12-29 | 115h | OHD 424 |  |
| 55 | 4.7.4 | OHD 424 — tête aval |  | 21.5d | 2026-12-28 | 2027-01-19 | start no earlier than 2026-12-28 | 215h | OHD 424 | Têtes |
| 56 | 4.7.5 | OHD 424 — tête amont |  | 24d | 2026-12-30 | 2027-01-23 | start no earlier than 2026-12-30 | 240h | OHD 424 | Têtes |
| 57 | 4.7.6 | Fin des travaux OHD 424 | milestone | 0d | 2027-01-26 | 2027-01-26 | start no earlier than 2027-01-25 |  | OHD 424 | Jalon |
| 58 | 4.7.7 | Épreuve OHD 424 |  | 1d | 2027-02-05 | 2027-02-06 | start no earlier than 2027-02-05 | 10h | OHD 424 | Épreuve |

| ID | WBS | Task | Type | Duration | Start | Finish | Predecessors | Constraint | Resources | Work | Ouvrage | Phase |
| --- | --- | --- | --- | --- | --- | --- | --- | --- | --- | --- | --- | --- |
| 59 | 5 | **BUSES OHB — toutes les buses en classe 135A** |  | 86.5d | 2026-10-19 | 2027-01-20 |  |  |  | 865h | MUR 3 |  |
| 60 | 5.1 | **OHB 357 — Buse 2 × Ø1600 — 60,96 ml** |  | 39d | 2026-10-19 | 2026-11-30 |  |  |  | 390h | MUR 3 |  |
| 61 | 5.1.1 | OHB 357 — Plan d'exécution | milestone | 0d | 2026-10-19 | 2026-10-19 |  | start no earlier than 2026-10-19 |  |  | MUR 3 | Jalon |
| 62 | 5.1.2 | OHB 357 — Implantation et fouille |  | 4d | 2026-10-19 | 2026-10-22 | 61 |  | OHB · Pelle 20-25 t | 40h | MUR 3 | Fouille |
| 63 | 5.1.3 | OHB 357 — Propreté, berceau et niches |  | 4d | 2026-10-23 | 2026-10-27 | 62 |  | OHB · Équipe de pose (grutier, chef de manœuvre, 3 poseurs); OHB · Pelle 20-25 t | 80h | MUR 3 | Béton de propreté |
| 64 | 5.1.4 | OHB 357 — Livraison des buses Ø1600 135A | milestone | 0d | 2026-10-27 | 2026-10-27 | 63 |  |  |  | MUR 3 | Jalon |
| 65 | 5.1.5 | OHB 357 — Pose des buses et réception du fil d'eau |  | 2d | 2026-10-31 | 2026-11-01 | 64, 63FS+3ed |  | OHB · Équipe de pose (grutier, chef de manœuvre, 3 poseurs); OHB · Grue 50-70 t (ou pelle ≥ 35 t certifiée levage) | 40h | MUR 3 |  |
| 66 | 5.1.6 | OHB 357 — 2 têtes TYPE I en parallèle |  | 15d | 2026-11-02 | 2026-11-17 | 65 |  | OHB · Ferrailleurs (têtes) [400%]; OHB · Coffreurs (têtes) [400%]; OHB · Maçons (têtes) [200%] | 1500h | MUR 3 | Têtes |
| 67 | 5.1.7 | OHB 357 — Perrés |  | 6d | 2026-11-18 | 2026-11-24 | 66 |  | OHB · Pelle 20-25 t; OHB · Équipe de pose (grutier, chef de manœuvre, 3 poseurs) | 120h | MUR 3 |  |
| 68 | 5.1.8 | OHB 357 — Remblai |  | 5d | 2026-11-25 | 2026-11-30 | 67 |  | OHB · Pelle 20-25 t; OHB · Équipe de pose (grutier, chef de manœuvre, 3 poseurs) | 100h | MUR 3 | Remblai |
| 69 | 5.2 | **OHB 389 — Ø1600 classe 135A, longueur du marché 19,09 m, PK 38+914** |  | 41d | 2026-11-02 | 2026-12-16 |  |  |  | 410h | MUR 3 |  |
| 70 | 5.2.1 | OHB 389 — Implantation et fouille |  | 4d | 2026-11-02 | 2026-11-05 | 65 |  | OHB · Pelle 20-25 t | 40h | MUR 3 | Fouille |
| 71 | 5.2.2 | OHB 389 — Propreté, berceau et niches |  | 4d | 2026-11-06 | 2026-11-10 | 70 |  | OHB · Équipe de pose (grutier, chef de manœuvre, 3 poseurs); OHB · Pelle 20-25 t | 80h | MUR 3 | Béton de propreté |
| 72 | 5.2.3 | OHB 389 — Livraison des buses Ø1600 135A | milestone | 0d | 2026-11-10 | 2026-11-10 | 71 |  |  |  | MUR 3 | Jalon |
| 73 | 5.2.4 | OHB 389 — Pose des buses et réception du fil d'eau |  | 2d | 2026-11-14 | 2026-11-15 | 72, 71FS+3ed |  | OHB · Équipe de pose (grutier, chef de manœuvre, 3 poseurs); OHB · Grue 50-70 t (ou pelle ≥ 35 t certifiée levage) | 40h | MUR 3 |  |
| 74 | 5.2.5 | OHB 389 — 2 têtes TYPE I en parallèle |  | 15d | 2026-11-18 | 2026-12-04 | 73, 66 |  | OHB · Ferrailleurs (têtes) [400%]; OHB · Coffreurs (têtes) [400%]; OHB · Maçons (têtes) [200%] | 1500h | MUR 3 | Têtes |
| 75 | 5.2.6 | OHB 389 — Perrés |  | 6d | 2026-12-05 | 2026-12-10 | 74 |  | OHB · Pelle 20-25 t; OHB · Équipe de pose (grutier, chef de manœuvre, 3 poseurs) | 120h | MUR 3 |  |
| 76 | 5.2.7 | OHB 389 — Remblai |  | 5d | 2026-12-11 | 2026-12-16 | 75 |  | OHB · Pelle 20-25 t; OHB · Équipe de pose (grutier, chef de manœuvre, 3 poseurs) | 100h | MUR 3 | Remblai |
| 77 | 5.3 | **OHB 391 — Ø1200 classe 135A, 7 éléments, PK 39+067,83** |  | 32.5d | 2026-12-17 | 2027-01-20 |  |  |  | 325h | MUR 3 |  |
| 78 | 5.3.1 | OHB 391 — Implantation, décapage et fouille |  | 3d | 2026-12-17 | 2026-12-19 | 76 |  | OHB · Pelle 20-25 t | 30h | MUR 3 | Fouille |
| 79 | 5.3.2 | OHB 391 — Lit de pose et niches |  | 3d | 2026-12-20 | 2026-12-22 | 78 |  | OHB · Équipe de pose (grutier, chef de manœuvre, 3 poseurs); OHB · Pelle 20-25 t | 60h | MUR 3 |  |
| 80 | 5.3.3 | OHB 391 — Livraison des buses Ø1200 135A | milestone | 0d | 2026-12-22 | 2026-12-22 | 79 |  |  |  | MUR 3 | Jalon |
| 81 | 5.3.4 | OHB 391 — Pose des 8 pièces et réception du fil d'eau |  | 2d | 2026-12-23 | 2026-12-24 | 80 |  | OHB · Équipe de pose (grutier, chef de manœuvre, 3 poseurs); OHB · Grue 50-70 t (ou pelle ≥ 35 t certifiée levage) | 40h | MUR 3 |  |
| 82 | 5.3.5 | OHB 391 — Têtes TYPE I aval et TYPE II amont (2 jeux de coffrage) |  | 18d | 2026-12-25 | 2027-01-13 | 81 |  | OHB · Ferrailleurs (têtes) [400%]; OHB · Coffreurs (têtes) [400%]; OHB · Maçons (têtes) [200%] | 1800h | MUR 3 | Têtes |
| 83 | 5.3.6 | OHB 391 — Perrés et enrochements |  | 5d | 2027-01-11 | 2027-01-16 | 82FS-2.5d |  | OHB · Pelle 20-25 t; OHB · Équipe de pose (grutier, chef de manœuvre, 3 poseurs) | 100h | MUR 3 |  |
| 84 | 5.3.7 | OHB 391 — Remblai et essais |  | 4d | 2027-01-16 | 2027-01-20 | 83 |  | OHB · Pelle 20-25 t; OHB · Équipe de pose (grutier, chef de manœuvre, 3 poseurs) | 80h | MUR 3 | Remblai |
| 85 | 5.3.8 | OHB 391 — remblai libéré | milestone | 0d | 2027-01-20 | 2027-01-20 | 84 |  |  |  | MUR 3 | Jalon |
